Activity ID,Activity Name,Curve,Budgeted Units,Start,Finish,Spreadsheet Field,2009-08-10 00:00:00,2009-08-11 00:00:00,2009-08-12 00:00:00,2009-08-13 00:00:00,2009-08-14 00:00:00,2009-08-15 00:00:00,2009-08-16 00:00:00,2009-08-17 00:00:00,2009-08-18 00:00:00,2009-08-19 00:00:00,2009-08-20 00:00:00,2009-08-21 00:00:00,2009-08-22 00:00:00,2009-08-23 00:00:00,2009-08-24 00:00:00,2009-08-25 00:00:00,2009-08-26 00:00:00,2009-08-27 00:00:00,2009-08-28 00:00:00,2009-08-29 00:00:00,2009-08-30 00:00:00,2009-08-31 00:00:00,2009-09-01 00:00:00,2009-09-02 00:00:00,2009-09-03 00:00:00,2009-09-04 00:00:00,2009-09-05 00:00:00,2009-09-06 00:00:00,2009-09-07 00:00:00,2009-09-08 00:00:00,2009-09-09 00:00:00,2009-09-10 00:00:00,2009-09-11 00:00:00,2009-09-12 00:00:00,2009-09-13 00:00:00,2009-09-14 00:00:00,2009-09-15 00:00:00,2009-09-16 00:00:00,2009-09-17 00:00:00,2009-09-18 00:00:00,2009-09-19 00:00:00,2009-09-20 00:00:00,2009-09-21 00:00:00,2009-09-22 00:00:00,2009-09-23 00:00:00,2009-09-24 00:00:00,2009-09-25 00:00:00,2009-09-26 00:00:00,2009-09-27 00:00:00,2009-09-28 00:00:00,2009-09-29 00:00:00,2009-09-30 00:00:00,2009-10-01 00:00:00,2009-10-02 00:00:00,2009-10-03 00:00:00,2009-10-04 00:00:00,2009-10-05 00:00:00,2009-10-06 00:00:00,2009-10-07 00:00:00,2009-10-08 00:00:00,2009-10-09 00:00:00,2009-10-10 00:00:00,2009-10-11 00:00:00,2009-10-12 00:00:00,2009-10-13 00:00:00,2009-10-14 00:00:00,2009-10-15 00:00:00,2009-10-16 00:00:00,2009-10-17 00:00:00,2009-10-18 00:00:00,2009-10-19 00:00:00,2009-10-20 00:00:00,2009-10-21 00:00:00,2009-10-22 00:00:00,2009-10-23 00:00:00,2009-10-24 00:00:00,2009-10-25 00:00:00,2009-10-26 00:00:00,2009-10-27 00:00:00,2009-10-28 00:00:00,2009-10-29 00:00:00,2009-10-30 00:00:00,2009-10-31 00:00:00,2009-11-01 00:00:00,2009-11-02 00:00:00,2009-11-03 00:00:00,2009-11-04 00:00:00,2009-11-05 00:00:00,2009-11-06 00:00:00,2009-11-07 00:00:00,2009-11-08 00:00:00,2009-11-09 00:00:00,2009-11-10 00:00:00,2009-11-11 00:00:00,2009-11-12 00:00:00,2009-11-13 00:00:00,2009-11-14 00:00:00,2009-11-15 00:00:00,2009-11-16 00:00:00,2009-11-17 00:00:00,2009-11-18 00:00:00,2009-11-19 00:00:00,2009-11-20 00:00:00,2009-11-21 00:00:00,2009-11-22 00:00:00,2009-11-23 00:00:00,2009-11-24 00:00:00,2009-11-25 00:00:00,2009-11-26 00:00:00,2009-11-27 00:00:00,2009-11-28 00:00:00,2009-11-29 00:00:00,2009-11-30 00:00:00,2009-12-01 00:00:00,2009-12-02 00:00:00,2009-12-03 00:00:00,2009-12-04 00:00:00,2009-12-05 00:00:00,2009-12-06 00:00:00,2009-12-07 00:00:00,2009-12-08 00:00:00,2009-12-09 00:00:00,2009-12-10 00:00:00,2009-12-11 00:00:00,2009-12-12 00:00:00,2009-12-13 00:00:00,2009-12-14 00:00:00,2009-12-15 00:00:00,2009-12-16 00:00:00,2009-12-17 00:00:00,2009-12-18 00:00:00,2009-12-19 00:00:00,2009-12-20 00:00:00,2009-12-21 00:00:00,2009-12-22 00:00:00,2009-12-23 00:00:00,2009-12-24 00:00:00,2009-12-25 00:00:00,2009-12-26 00:00:00,2009-12-27 00:00:00,2009-12-28 00:00:00,2009-12-29 00:00:00,2009-12-30 00:00:00,2009-12-31 00:00:00,2010-01-01 00:00:00,2010-01-02 00:00:00,2010-01-03 00:00:00,2010-01-04 00:00:00,2010-01-05 00:00:00,2010-01-06 00:00:00,2010-01-07 00:00:00,2010-01-08 00:00:00,2010-01-09 00:00:00,2010-01-10 00:00:00,2010-01-11 00:00:00,2010-01-12 00:00:00,2010-01-13 00:00:00,2010-01-14 00:00:00,2010-01-15 00:00:00,2010-01-16 00:00:00,2010-01-17 00:00:00,2010-01-18 00:00:00,2010-01-19 00:00:00,2010-01-20 00:00:00,2010-01-21 00:00:00,2010-01-22 00:00:00,2010-01-23 00:00:00,2010-01-24 00:00:00,2010-01-25 00:00:00,2010-01-26 00:00:00,2010-01-27 00:00:00,2010-01-28 00:00:00,2010-01-29 00:00:00,2010-01-30 00:00:00,2010-01-31 00:00:00,2010-02-01 00:00:00,2010-02-02 00:00:00,2010-02-03 00:00:00,2010-02-04 00:00:00,2010-02-05 00:00:00,2010-02-06 00:00:00,2010-02-07 00:00:00,2010-02-08 00:00:00,2010-02-09 00:00:00,2010-02-10 00:00:00,2010-02-11 00:00:00,2010-02-12 00:00:00,2010-02-13 00:00:00,2010-02-14 00:00:00,2010-02-15 00:00:00,2010-02-16 00:00:00,2010-02-17 00:00:00,2010-02-18 00:00:00,2010-02-19 00:00:00,2010-02-20 00:00:00,2010-02-21 00:00:00,2010-02-22 00:00:00,2010-02-23 00:00:00,2010-02-24 00:00:00,2010-02-25 00:00:00,2010-02-26 00:00:00,2010-02-27 00:00:00,2010-02-28 00:00:00,2010-03-01 00:00:00,2010-03-02 00:00:00,2010-03-03 00:00:00,2010-03-04 00:00:00,2010-03-05 00:00:00,2010-03-06 00:00:00,2010-03-07 00:00:00,2010-03-08 00:00:00,2010-03-09 00:00:00,2010-03-10 00:00:00,2010-03-11 00:00:00,2010-03-12 00:00:00,2010-03-13 00:00:00,2010-03-14 00:00:00,2010-03-15 00:00:00,2010-03-16 00:00:00,2010-03-17 00:00:00,2010-03-18 00:00:00,2010-03-19 00:00:00,2010-03-20 00:00:00,2010-03-21 00:00:00,2010-03-22 00:00:00,2010-03-23 00:00:00,2010-03-24 00:00:00,2010-03-25 00:00:00,2010-03-26 00:00:00,2010-03-27 00:00:00,2010-03-28 00:00:00,2010-03-29 00:00:00,2010-03-30 00:00:00,2010-03-31 00:00:00,2010-04-01 00:00:00,2010-04-02 00:00:00,2010-04-03 00:00:00,2010-04-04 00:00:00,2010-04-05 00:00:00,2010-04-06 00:00:00,2010-04-07 00:00:00,2010-04-08 00:00:00,2010-04-09 00:00:00,2010-04-10 00:00:00,2010-04-11 00:00:00,2010-04-12 00:00:00,2010-04-13 00:00:00,2010-04-14 00:00:00,2010-04-15 00:00:00,2010-04-16 00:00:00,2010-04-17 00:00:00,2010-04-18 00:00:00,2010-04-19 00:00:00,2010-04-20 00:00:00,2010-04-21 00:00:00,2010-04-22 00:00:00,2010-04-23 00:00:00,2010-04-24 00:00:00,2010-04-25 00:00:00,2010-04-26 00:00:00,2010-04-27 00:00:00,2010-04-28 00:00:00,2010-04-29 00:00:00,2010-04-30 00:00:00,2010-05-01 00:00:00,2010-05-02 00:00:00,2010-05-03 00:00:00,2010-05-04 00:00:00,2010-05-05 00:00:00,2010-05-06 00:00:00,2010-05-07 00:00:00,2010-05-08 00:00:00,2010-05-09 00:00:00,2010-05-10 00:00:00,2010-05-11 00:00:00,2010-05-12 00:00:00,2010-05-13 00:00:00,2010-05-14 00:00:00,2010-05-15 00:00:00,2010-05-16 00:00:00,2010-05-17 00:00:00,2010-05-18 00:00:00,2010-05-19 00:00:00,2010-05-20 00:00:00,2010-05-21 00:00:00,2010-05-22 00:00:00,2010-05-23 00:00:00,2010-05-24 00:00:00,2010-05-25 00:00:00,2010-05-26 00:00:00,2010-05-27 00:00:00,2010-05-28 00:00:00,2010-05-29 00:00:00,2010-05-30 00:00:00,2010-05-31 00:00:00,2010-06-01 00:00:00,2010-06-02 00:00:00,2010-06-03 00:00:00,2010-06-04 00:00:00,2010-06-05 00:00:00,2010-06-06 00:00:00,2010-06-07 00:00:00,2010-06-08 00:00:00,2010-06-09 00:00:00,2010-06-10 00:00:00,2010-06-11 00:00:00,2010-06-12 00:00:00,2010-06-13 00:00:00,2010-06-14 00:00:00,2010-06-15 00:00:00,2010-06-16 00:00:00,2010-06-17 00:00:00,2010-06-18 00:00:00,2010-06-19 00:00:00,2010-06-20 00:00:00,2010-06-21 00:00:00,2010-06-22 00:00:00,2010-06-23 00:00:00,2010-06-24 00:00:00,2010-06-25 00:00:00,2010-06-26 00:00:00,2010-06-27 00:00:00,2010-06-28 00:00:00,2010-06-29 00:00:00,2010-06-30 00:00:00,2010-07-01 00:00:00,2010-07-02 00:00:00,2010-07-03 00:00:00,2010-07-04 00:00:00,2010-07-05 00:00:00,2010-07-06 00:00:00,2010-07-07 00:00:00,2010-07-08 00:00:00,2010-07-09 00:00:00,2010-07-10 00:00:00,2010-07-11 00:00:00,2010-07-12 00:00:00,2010-07-13 00:00:00,2010-07-14 00:00:00,2010-07-15 00:00:00,2010-07-16 00:00:00,2010-07-17 00:00:00,2010-07-18 00:00:00,2010-07-19 00:00:00,2010-07-20 00:00:00,2010-07-21 00:00:00,2010-07-22 00:00:00,2010-07-23 00:00:00,2010-07-24 00:00:00,2010-07-25 00:00:00,2010-07-26 00:00:00,2010-07-27 00:00:00,2010-07-28 00:00:00,2010-07-29 00:00:00,2010-07-30 00:00:00,2010-07-31 00:00:00,2010-08-01 00:00:00,2010-08-02 00:00:00,2010-08-03 00:00:00,2010-08-04 00:00:00,2010-08-05 00:00:00,2010-08-06 00:00:00,2010-08-07 00:00:00,2010-08-08 00:00:00,2010-08-09 00:00:00,2010-08-10 00:00:00,2010-08-11 00:00:00,2010-08-12 00:00:00,2010-08-13 00:00:00,2010-08-14 00:00:00,2010-08-15 00:00:00,2010-08-16 00:00:00,2010-08-17 00:00:00,2010-08-18 00:00:00,2010-08-19 00:00:00,2010-08-20 00:00:00,2010-08-21 00:00:00,2010-08-22 00:00:00,2010-08-23 00:00:00,2010-08-24 00:00:00,2010-08-25 00:00:00,2010-08-26 00:00:00,2010-08-27 00:00:00,2010-08-28 00:00:00,2010-08-29 00:00:00,2010-08-30 00:00:00,2010-08-31 00:00:00,2010-09-01 00:00:00,2010-09-02 00:00:00,2010-09-03 00:00:00,2010-09-04 00:00:00,2010-09-05 00:00:00,2010-09-06 00:00:00,2010-09-07 00:00:00,2010-09-08 00:00:00,2010-09-09 00:00:00,2010-09-10 00:00:00,2010-09-11 00:00:00,2010-09-12 00:00:00,2010-09-13 00:00:00,2010-09-14 00:00:00,2010-09-15 00:00:00,2010-09-16 00:00:00,2010-09-17 00:00:00,2010-09-18 00:00:00,2010-09-19 00:00:00,2010-09-20 00:00:00,2010-09-21 00:00:00,2010-09-22 00:00:00,2010-09-23 00:00:00,2010-09-24 00:00:00,2010-09-25 00:00:00,2010-09-26 00:00:00,2010-09-27 00:00:00,2010-09-28 00:00:00,2010-09-29 00:00:00,2010-09-30 00:00:00,2010-10-01 00:00:00,2010-10-02 00:00:00,2010-10-03 00:00:00,2010-10-04 00:00:00,2010-10-05 00:00:00,2010-10-06 00:00:00,2010-10-07 00:00:00,2010-10-08 00:00:00,2010-10-09 00:00:00,2010-10-10 00:00:00,2010-10-11 00:00:00,2010-10-12 00:00:00,2010-10-13 00:00:00,2010-10-14 00:00:00,2010-10-15 00:00:00,2010-10-16 00:00:00,2010-10-17 00:00:00,2010-10-18 00:00:00,2010-10-19 00:00:00,2010-10-20 00:00:00,2010-10-21 00:00:00,2010-10-22 00:00:00,2010-10-23 00:00:00,2010-10-24 00:00:00,2010-10-25 00:00:00,2010-10-26 00:00:00,2010-10-27 00:00:00,2010-10-28 00:00:00,2010-10-29 00:00:00,2010-10-30 00:00:00,2010-10-31 00:00:00,2010-11-01 00:00:00,2010-11-02 00:00:00,2010-11-03 00:00:00,2010-11-04 00:00:00,2010-11-05 00:00:00,2010-11-06 00:00:00,2010-11-07 00:00:00,2010-11-08 00:00:00,2010-11-09 00:00:00,2010-11-10 00:00:00,2010-11-11 00:00:00,2010-11-12 00:00:00,2010-11-13 00:00:00,2010-11-14 00:00:00,2010-11-15 00:00:00,2010-11-16 00:00:00,2010-11-17 00:00:00,2010-11-18 00:00:00,2010-11-19 00:00:00,2010-11-20 00:00:00,2010-11-21 00:00:00,2010-11-22 00:00:00,2010-11-23 00:00:00,2010-11-24 00:00:00,2010-11-25 00:00:00,2010-11-26 00:00:00,2010-11-27 00:00:00,2010-11-28 00:00:00,2010-11-29 00:00:00,2010-11-30 00:00:00,2010-12-01 00:00:00,2010-12-02 00:00:00,2010-12-03 00:00:00,2010-12-04 00:00:00,2010-12-05 00:00:00,2010-12-06 00:00:00,2010-12-07 00:00:00,2010-12-08 00:00:00,2010-12-09 00:00:00,2010-12-10 00:00:00,2010-12-11 00:00:00,2010-12-12 00:00:00,2010-12-13 00:00:00,2010-12-14 00:00:00,2010-12-15 00:00:00,2010-12-16 00:00:00,2010-12-17 00:00:00,2010-12-18 00:00:00,2010-12-19 00:00:00,2010-12-20 00:00:00,2010-12-21 00:00:00,2010-12-22 00:00:00,2010-12-23 00:00:00,2010-12-24 00:00:00,2010-12-25 00:00:00,2010-12-26 00:00:00,2010-12-27 00:00:00,2010-12-28 00:00:00,2010-12-29 00:00:00,2010-12-30 00:00:00,2010-12-31 00:00:00,2011-01-01 00:00:00,2011-01-02 00:00:00,2011-01-03 00:00:00,2011-01-04 00:00:00,2011-01-05 00:00:00,2011-01-06 00:00:00,2011-01-07 00:00:00,2011-01-08 00:00:00,2011-01-09 00:00:00,2011-01-10 00:00:00,2011-01-11 00:00:00,2011-01-12 00:00:00,2011-01-13 00:00:00,2011-01-14 00:00:00,2011-01-15 00:00:00,2011-01-16 00:00:00,2011-01-17 00:00:00,2011-01-18 00:00:00,2011-01-19 00:00:00,2011-01-20 00:00:00,2011-01-21 00:00:00,2011-01-22 00:00:00,2011-01-23 00:00:00,2011-01-24 00:00:00,2011-01-25 00:00:00,2011-01-26 00:00:00,2011-01-27 00:00:00,2011-01-28 00:00:00,2011-01-29 00:00:00,2011-01-30 00:00:00,2011-01-31 00:00:00,2011-02-01 00:00:00,2011-02-02 00:00:00,2011-02-03 00:00:00,2011-02-04 00:00:00,2011-02-05 00:00:00,2011-02-06 00:00:00,2011-02-07 00:00:00,2011-02-08 00:00:00,2011-02-09 00:00:00,2011-02-10 00:00:00,2011-02-11 00:00:00,2011-02-12 00:00:00,2011-02-13 00:00:00,2011-02-14 00:00:00,2011-02-15 00:00:00,2011-02-16 00:00:00,2011-02-17 00:00:00,2011-02-18 00:00:00,2011-02-19 00:00:00,2011-02-20 00:00:00,2011-02-21 00:00:00,2011-02-22 00:00:00,2011-02-23 00:00:00,2011-02-24 00:00:00,2011-02-25 00:00:00,2011-02-26 00:00:00,2011-02-27 00:00:00,2011-02-28 00:00:00,2011-03-01 00:00:00,2011-03-02 00:00:00,2011-03-03 00:00:00,2011-03-04 00:00:00,2011-03-05 00:00:00,2011-03-06 00:00:00,2011-03-07 00:00:00,2011-03-08 00:00:00,2011-03-09 00:00:00,2011-03-10 00:00:00,2011-03-11 00:00:00,2011-03-12 00:00:00,2011-03-13 00:00:00,2011-03-14 00:00:00,2011-03-15 00:00:00,2011-03-16 00:00:00,2011-03-17 00:00:00,2011-03-18 00:00:00,2011-03-19 00:00:00,2011-03-20 00:00:00,2011-03-21 00:00:00,2011-03-22 00:00:00,2011-03-23 00:00:00,2011-03-24 00:00:00,2011-03-25 00:00:00,2011-03-26 00:00:00,2011-03-27 00:00:00,2011-03-28 00:00:00,2011-03-29 00:00:00,2011-03-30 00:00:00,2011-03-31 00:00:00,2011-04-01 00:00:00,2011-04-02 00:00:00,2011-04-03 00:00:00,2011-04-04 00:00:00,2011-04-05 00:00:00,2011-04-06 00:00:00,2011-04-07 00:00:00,2011-04-08 00:00:00,2011-04-09 00:00:00,2011-04-10 00:00:00,2011-04-11 00:00:00,2011-04-12 00:00:00,2011-04-13 00:00:00,2011-04-14 00:00:00,2011-04-15 00:00:00,2011-04-16 00:00:00,2011-04-17 00:00:00,2011-04-18 00:00:00,2011-04-19 00:00:00,2011-04-20 00:00:00,2011-04-21 00:00:00,2011-04-22 00:00:00,2011-04-23 00:00:00,2011-04-24 00:00:00,2011-04-25 00:00:00,2011-04-26 00:00:00,2011-04-27 00:00:00,2011-04-28 00:00:00,2011-04-29 00:00:00,2011-04-30 00:00:00,2011-05-01 00:00:00,2011-05-02 00:00:00,2011-05-03 00:00:00,2011-05-04 00:00:00,2011-05-05 00:00:00,2011-05-06 00:00:00,2011-05-07 00:00:00,2011-05-08 00:00:00,2011-05-09 00:00:00,2011-05-10 00:00:00,2011-05-11 00:00:00,2011-05-12 00:00:00,2011-05-13 00:00:00,2011-05-14 00:00:00,2011-05-15 00:00:00,2011-05-16 00:00:00,2011-05-17 00:00:00,2011-05-18 00:00:00,2011-05-19 00:00:00,2011-05-20 00:00:00,2011-05-21 00:00:00,2011-05-22 00:00:00,2011-05-23 00:00:00,2011-05-24 00:00:00,2011-05-25 00:00:00,2011-05-26 00:00:00,2011-05-27 00:00:00,2011-05-28 00:00:00,2011-05-29 00:00:00,2011-05-30 00:00:00,2011-05-31 00:00:00,2011-06-01 00:00:00,2011-06-02 00:00:00,2011-06-03 00:00:00,2011-06-04 00:00:00,2011-06-05 00:00:00,2011-06-06 00:00:00,2011-06-07 00:00:00,2011-06-08 00:00:00,2011-06-09 00:00:00,2011-06-10 00:00:00,2011-06-11 00:00:00,2011-06-12 00:00:00,2011-06-13 00:00:00,2011-06-14 00:00:00,2011-06-15 00:00:00,2011-06-16 00:00:00,2011-06-17 00:00:00,2011-06-18 00:00:00,2011-06-19 00:00:00,2011-06-20 00:00:00,2011-06-21 00:00:00,2011-06-22 00:00:00,2011-06-23 00:00:00,2011-06-24 00:00:00,2011-06-25 00:00:00,2011-06-26 00:00:00,2011-06-27 00:00:00,2011-06-28 00:00:00,2011-06-29 00:00:00,2011-06-30 00:00:00,2011-07-01 00:00:00,2011-07-02 00:00:00,2011-07-03 00:00:00,2011-07-04 00:00:00,2011-07-05 00:00:00,2011-07-06 00:00:00,2011-07-07 00:00:00,2011-07-08 00:00:00,2011-07-09 00:00:00,2011-07-10 00:00:00,2011-07-11 00:00:00,2011-07-12 00:00:00,2011-07-13 00:00:00,2011-07-14 00:00:00,2011-07-15 00:00:00,2011-07-16 00:00:00,2011-07-17 00:00:00,2011-07-18 00:00:00,2011-07-19 00:00:00,2011-07-20 00:00:00,2011-07-21 00:00:00,2011-07-22 00:00:00,2011-07-23 00:00:00,2011-07-24 00:00:00,2011-07-25 00:00:00,2011-07-26 00:00:00,2011-07-27 00:00:00,2011-07-28 00:00:00,2011-07-29 00:00:00,2011-07-30 00:00:00,2011-07-31 00:00:00,2011-08-01 00:00:00,2011-08-02 00:00:00,2011-08-03 00:00:00,2011-08-04 00:00:00,2011-08-05 00:00:00,2011-08-06 00:00:00,2011-08-07 00:00:00,2011-08-08 00:00:00,2011-08-09 00:00:00,2011-08-10 00:00:00,2011-08-11 00:00:00,2011-08-12 00:00:00,2011-08-13 00:00:00,2011-08-14 00:00:00,2011-08-15 00:00:00,2011-08-16 00:00:00,2011-08-17 00:00:00,2011-08-18 00:00:00,2011-08-19 00:00:00,2011-08-20 00:00:00,2011-08-21 00:00:00,2011-08-22 00:00:00,2011-08-23 00:00:00,2011-08-24 00:00:00,2011-08-25 00:00:00,2011-08-26 00:00:00,2011-08-27 00:00:00,2011-08-28 00:00:00,2011-08-29 00:00:00,2011-08-30 00:00:00,2011-08-31 00:00:00,2011-09-01 00:00:00,2011-09-02 00:00:00,2011-09-03 00:00:00,2011-09-04 00:00:00,2011-09-05 00:00:00,2011-09-06 00:00:00,2011-09-07 00:00:00,2011-09-08 00:00:00,2011-09-09 00:00:00,2011-09-10 00:00:00,2011-09-11 00:00:00,2011-09-12 00:00:00,2011-09-13 00:00:00,2011-09-14 00:00:00,2011-09-15 00:00:00,2011-09-16 00:00:00,2011-09-17 00:00:00,2011-09-18 00:00:00,2011-09-19 00:00:00,2011-09-20 00:00:00,2011-09-21 00:00:00,2011-09-22 00:00:00,2011-09-23 00:00:00,2011-09-24 00:00:00,2011-09-25 00:00:00,2011-09-26 00:00:00,2011-09-27 00:00:00,2011-09-28 00:00:00,2011-09-29 00:00:00,2011-09-30 00:00:00,2011-10-01 00:00:00,2011-10-02 00:00:00,2011-10-03 00:00:00,2011-10-04 00:00:00,2011-10-05 00:00:00,2011-10-06 00:00:00,2011-10-07 00:00:00,2011-10-08 00:00:00,2011-10-09 00:00:00,2011-10-10 00:00:00,2011-10-11 00:00:00,2011-10-12 00:00:00,2011-10-13 00:00:00,2011-10-14 00:00:00,2011-10-15 00:00:00,2011-10-16 00:00:00,2011-10-17 00:00:00,2011-10-18 00:00:00,2011-10-19 00:00:00,2011-10-20 00:00:00,2011-10-21 00:00:00,2011-10-22 00:00:00,2011-10-23 00:00:00,2011-10-24 00:00:00,2011-10-25 00:00:00,2011-10-26 00:00:00,2011-10-27 00:00:00,2011-10-28 00:00:00,2011-10-29 00:00:00,2011-10-30 00:00:00,2011-10-31 00:00:00,2011-11-01 00:00:00,2011-11-02 00:00:00,2011-11-03 00:00:00,2011-11-04 00:00:00,2011-11-05 00:00:00,2011-11-06 00:00:00,2011-11-07 00:00:00,2011-11-08 00:00:00,2011-11-09 00:00:00,2011-11-10 00:00:00,2011-11-11 00:00:00,2011-11-12 00:00:00,2011-11-13 00:00:00,2011-11-14 00:00:00,2011-11-15 00:00:00,2011-11-16 00:00:00,2011-11-17 00:00:00,2011-11-18 00:00:00,2011-11-19 00:00:00,2011-11-20 00:00:00,2011-11-21 00:00:00,2011-11-22 00:00:00,2011-11-23 00:00:00,2011-11-24 00:00:00,2011-11-25 00:00:00,2011-11-26 00:00:00,2011-11-27 00:00:00,2011-11-28 00:00:00,2011-11-29 00:00:00,2011-11-30 00:00:00,2011-12-01 00:00:00,2011-12-02 00:00:00,2011-12-03 00:00:00,2011-12-04 00:00:00,2011-12-05 00:00:00,2011-12-06 00:00:00,2011-12-07 00:00:00,2011-12-08 00:00:00,2011-12-09 00:00:00,2011-12-10 00:00:00,2011-12-11 00:00:00,2011-12-12 00:00:00,2011-12-13 00:00:00,2011-12-14 00:00:00,2011-12-15 00:00:00,2011-12-16 00:00:00,2011-12-17 00:00:00,2011-12-18 00:00:00,2011-12-19 00:00:00,2011-12-20 00:00:00,2011-12-21 00:00:00,2011-12-22 00:00:00,2011-12-23 00:00:00,2011-12-24 00:00:00,2011-12-25 00:00:00,2011-12-26 00:00:00,2011-12-27 00:00:00,2011-12-28 00:00:00,2011-12-29 00:00:00,2011-12-30 00:00:00,2011-12-31 00:00:00,2012-01-01 00:00:00,2012-01-02 00:00:00,2012-01-03 00:00:00,2012-01-04 00:00:00,2012-01-05 00:00:00,2012-01-06 00:00:00,2012-01-07 00:00:00,2012-01-08 00:00:00,2012-01-09 00:00:00,2012-01-10 00:00:00,2012-01-11 00:00:00,2012-01-12 00:00:00,2012-01-13 00:00:00,2012-01-14 00:00:00,2012-01-15 00:00:00,2012-01-16 00:00:00,2012-01-17 00:00:00,2012-01-18 00:00:00,2012-01-19 00:00:00,2012-01-20 00:00:00,2012-01-21 00:00:00,2012-01-22 00:00:00,2012-01-23 00:00:00,2012-01-24 00:00:00,2012-01-25 00:00:00,2012-01-26 00:00:00,2012-01-27 00:00:00,2012-01-28 00:00:00,2012-01-29 00:00:00,2012-01-30 00:00:00,2012-01-31 00:00:00,2012-02-01 00:00:00,2012-02-02 00:00:00,2012-02-03 00:00:00,2012-02-04 00:00:00,2012-02-05 00:00:00,2012-02-06 00:00:00,2012-02-07 00:00:00,2012-02-08 00:00:00,2012-02-09 00:00:00,2012-02-10 00:00:00,2012-02-11 00:00:00,2012-02-12 00:00:00,2012-02-13 00:00:00,2012-02-14 00:00:00,2012-02-15 00:00:00,2012-02-16 00:00:00,2012-02-17 00:00:00,2012-02-18 00:00:00,2012-02-19 00:00:00,2012-02-20 00:00:00,2012-02-21 00:00:00,2012-02-22 00:00:00,2012-02-23 00:00:00,2012-02-24 00:00:00,2012-02-25 00:00:00,2012-02-26 00:00:00,2012-02-27 00:00:00,2012-02-28 00:00:00,2012-02-29 00:00:00,2012-03-01 00:00:00,2012-03-02 00:00:00,2012-03-03 00:00:00,2012-03-04 00:00:00,2012-03-05 00:00:00,2012-03-06 00:00:00,2012-03-07 00:00:00,2012-03-08 00:00:00,2012-03-09 00:00:00,2012-03-10 00:00:00,2012-03-11 00:00:00,2012-03-12 00:00:00,2012-03-13 00:00:00,2012-03-14 00:00:00,2012-03-15 00:00:00,2012-03-16 00:00:00,2012-03-17 00:00:00,2012-03-18 00:00:00,2012-03-19 00:00:00,2012-03-20 00:00:00,2012-03-21 00:00:00,2012-03-22 00:00:00,2012-03-23 00:00:00,2012-03-24 00:00:00,2012-03-25 00:00:00,2012-03-26 00:00:00,2012-03-27 00:00:00,2012-03-28 00:00:00,2012-03-29 00:00:00,2012-03-30 00:00:00,2012-03-31 00:00:00,2012-04-01 00:00:00,2012-04-02 00:00:00,2012-04-03 00:00:00,2012-04-04 00:00:00,2012-04-05 00:00:00,2012-04-06 00:00:00,2012-04-07 00:00:00,2012-04-08 00:00:00,2012-04-09 00:00:00,2012-04-10 00:00:00,2012-04-11 00:00:00,2012-04-12 00:00:00,2012-04-13 00:00:00,2012-04-14 00:00:00,2012-04-15 00:00:00,2012-04-16 00:00:00,2012-04-17 00:00:00,2012-04-18 00:00:00,2012-04-19 00:00:00,2012-04-20 00:00:00,2012-04-21 00:00:00,2012-04-22 00:00:00,2012-04-23 00:00:00,2012-04-24 00:00:00,2012-04-25 00:00:00,2012-04-26 00:00:00,2012-04-27 00:00:00,2012-04-28 00:00:00,2012-04-29 00:00:00,2012-04-30 00:00:00,2012-05-01 00:00:00,2012-05-02 00:00:00,2012-05-03 00:00:00,2012-05-04 00:00:00,2012-05-05 00:00:00,2012-05-06 00:00:00,2012-05-07 00:00:00,2012-05-08 00:00:00,2012-05-09 00:00:00,2012-05-10 00:00:00,2012-05-11 00:00:00,2012-05-12 00:00:00,2012-05-13 00:00:00,2012-05-14 00:00:00,2012-05-15 00:00:00,2012-05-16 00:00:00,2012-05-17 00:00:00,2012-05-18 00:00:00,2012-05-19 00:00:00,2012-05-20 00:00:00,2012-05-21 00:00:00,2012-05-22 00:00:00,2012-05-23 00:00:00,2012-05-24 00:00:00,2012-05-25 00:00:00,2012-05-26 00:00:00,2012-05-27 00:00:00,2012-05-28 00:00:00,2012-05-29 00:00:00,2012-05-30 00:00:00,2012-05-31 00:00:00,2012-06-01 00:00:00,2012-06-02 00:00:00,2012-06-03 00:00:00,2012-06-04 00:00:00,2012-06-05 00:00:00,2012-06-06 00:00:00,2012-06-07 00:00:00,2012-06-08 00:00:00,2012-06-09 00:00:00,2012-06-10 00:00:00,2012-06-11 00:00:00,2012-06-12 00:00:00,2012-06-13 00:00:00,2012-06-14 00:00:00,2012-06-15 00:00:00,2012-06-16 00:00:00,2012-06-17 00:00:00,2012-06-18 00:00:00,2012-06-19 00:00:00,2012-06-20 00:00:00,2012-06-21 00:00:00,2012-06-22 00:00:00,2012-06-23 00:00:00,2012-06-24 00:00:00,2012-06-25 00:00:00,2012-06-26 00:00:00,2012-06-27 00:00:00,2012-06-28 00:00:00,2012-06-29 00:00:00,2012-06-30 00:00:00,2012-07-01 00:00:00,2012-07-02 00:00:00,2012-07-03 00:00:00,2012-07-04 00:00:00,2012-07-05 00:00:00,2012-07-06 00:00:00,2012-07-07 00:00:00,2012-07-08 00:00:00,2012-07-09 00:00:00,2012-07-10 00:00:00,2012-07-11 00:00:00,2012-07-12 00:00:00,2012-07-13 00:00:00,2012-07-14 00:00:00,2012-07-15 00:00:00,2012-07-16 00:00:00,2012-07-17 00:00:00,2012-07-18 00:00:00,2012-07-19 00:00:00,2012-07-20 00:00:00,2012-07-21 00:00:00,2012-07-22 00:00:00,2012-07-23 00:00:00,2012-07-24 00:00:00,2012-07-25 00:00:00,2012-07-26 00:00:00,2012-07-27 00:00:00,2012-07-28 00:00:00,2012-07-29 00:00:00,2012-07-30 00:00:00,2012-07-31 00:00:00,2012-08-01 00:00:00,2012-08-02 00:00:00,2012-08-03 00:00:00,2012-08-04 00:00:00,2012-08-05 00:00:00,2012-08-06 00:00:00,2012-08-07 00:00:00,2012-08-08 00:00:00,2012-08-09 00:00:00,2012-08-10 00:00:00,2012-08-11 00:00:00,2012-08-12 00:00:00,2012-08-13 00:00:00,2012-08-14 00:00:00,2012-08-15 00:00:00,2012-08-16 00:00:00,2012-08-17 00:00:00,2012-08-18 00:00:00,2012-08-19 00:00:00,2012-08-20 00:00:00,2012-08-21 00:00:00,2012-08-22 00:00:00,2012-08-23 00:00:00,2012-08-24 00:00:00,2012-08-25 00:00:00,2012-08-26 00:00:00,2012-08-27 00:00:00,2012-08-28 00:00:00,2012-08-29 00:00:00,2012-08-30 00:00:00,2012-08-31 00:00:00,2012-09-01 00:00:00,2012-09-02 00:00:00,2012-09-03 00:00:00,2012-09-04 00:00:00,2012-09-05 00:00:00,2012-09-06 00:00:00,2012-09-07 00:00:00,2012-09-08 00:00:00,2012-09-09 00:00:00,2012-09-10 00:00:00,2012-09-11 00:00:00,2012-09-12 00:00:00,2012-09-13 00:00:00,2012-09-14 00:00:00,2012-09-15 00:00:00,2012-09-16 00:00:00,2012-09-17 00:00:00,2012-09-18 00:00:00,2012-09-19 00:00:00,2012-09-20 00:00:00,2012-09-21 00:00:00,2012-09-22 00:00:00,2012-09-23 00:00:00,2012-09-24 00:00:00,2012-09-25 00:00:00,2012-09-26 00:00:00,2012-09-27 00:00:00,2012-09-28 00:00:00,2012-09-29 00:00:00,2012-09-30 00:00:00,2012-10-01 00:00:00,2012-10-02 00:00:00,2012-10-03 00:00:00,2012-10-04 00:00:00,2012-10-05 00:00:00,2012-10-06 00:00:00,2012-10-07 00:00:00,2012-10-08 00:00:00,2012-10-09 00:00:00,2012-10-10 00:00:00,2012-10-11 00:00:00,2012-10-12 00:00:00,2012-10-13 00:00:00,2012-10-14 00:00:00,2012-10-15 00:00:00,2012-10-16 00:00:00,2012-10-17 00:00:00,2012-10-18 00:00:00,2012-10-19 00:00:00,2012-10-20 00:00:00,2012-10-21 00:00:00,2012-10-22 00:00:00,2012-10-23 00:00:00,2012-10-24 00:00:00,2012-10-25 00:00:00,2012-10-26 00:00:00,2012-10-27 00:00:00,2012-10-28 00:00:00,2012-10-29 00:00:00,2012-10-30 00:00:00,2012-10-31 00:00:00,2012-11-01 00:00:00,2012-11-02 00:00:00,2012-11-03 00:00:00,2012-11-04 00:00:00,2012-11-05 00:00:00,2012-11-06 00:00:00,2012-11-07 00:00:00,2012-11-08 00:00:00,2012-11-09 00:00:00,2012-11-10 00:00:00,2012-11-11 00:00:00,2012-11-12 00:00:00,2012-11-13 00:00:00,2012-11-14 00:00:00,2012-11-15 00:00:00,2012-11-16 00:00:00,2012-11-17 00:00:00,2012-11-18 00:00:00,2012-11-19 00:00:00,2012-11-20 00:00:00,2012-11-21 00:00:00,2012-11-22 00:00:00,2012-11-23 00:00:00,2012-11-24 00:00:00,2012-11-25 00:00:00,2012-11-26 00:00:00,2012-11-27 00:00:00,2012-11-28 00:00:00,2012-11-29 00:00:00,2012-11-30 00:00:00,2012-12-01 00:00:00,2012-12-02 00:00:00,2012-12-03 00:00:00,2012-12-04 00:00:00,2012-12-05 00:00:00,2012-12-06 00:00:00,2012-12-07 00:00:00,2012-12-08 00:00:00,2012-12-09 00:00:00,2012-12-10 00:00:00,2012-12-11 00:00:00,2012-12-12 00:00:00,2012-12-13 00:00:00,2012-12-14 00:00:00,2012-12-15 00:00:00,2012-12-16 00:00:00,2012-12-17 00:00:00,2012-12-18 00:00:00,2012-12-19 00:00:00,2012-12-20 00:00:00,2012-12-21 00:00:00,2012-12-22 00:00:00,2012-12-23 00:00:00,2012-12-24 00:00:00,2012-12-25 00:00:00,2012-12-26 00:00:00,2012-12-27 00:00:00,2012-12-28 00:00:00,2012-12-29 00:00:00,2012-12-30 00:00:00,2012-12-31 00:00:00,2013-01-01 00:00:00,2013-01-02 00:00:00,2013-01-03 00:00:00,2013-01-04 00:00:00,2013-01-05 00:00:00,2013-01-06 00:00:00,2013-01-07 00:00:00,2013-01-08 00:00:00,2013-01-09 00:00:00,2013-01-10 00:00:00,2013-01-11 00:00:00,2013-01-12 00:00:00,2013-01-13 00:00:00,2013-01-14 00:00:00,2013-01-15 00:00:00,2013-01-16 00:00:00,2013-01-17 00:00:00,2013-01-18 00:00:00,2013-01-19 00:00:00,2013-01-20 00:00:00,2013-01-21 00:00:00,2013-01-22 00:00:00,2013-01-23 00:00:00,2013-01-24 00:00:00,2013-01-25 00:00:00,2013-01-26 00:00:00,2013-01-27 00:00:00,2013-01-28 00:00:00,2013-01-29 00:00:00,2013-01-30 00:00:00,2013-01-31 00:00:00,2013-02-01 00:00:00,2013-02-02 00:00:00,2013-02-03 00:00:00,2013-02-04 00:00:00,2013-02-05 00:00:00,2013-02-06 00:00:00,2013-02-07 00:00:00,2013-02-08 00:00:00,2013-02-09 00:00:00,2013-02-10 00:00:00,2013-02-11 00:00:00,2013-02-12 00:00:00,2013-02-13 00:00:00,2013-02-14 00:00:00,2013-02-15 00:00:00,2013-02-16 00:00:00,2013-02-17 00:00:00,2013-02-18 00:00:00,2013-02-19 00:00:00,2013-02-20 00:00:00,2013-02-21 00:00:00,2013-02-22 00:00:00,2013-02-23 00:00:00,2013-02-24 00:00:00,2013-02-25 00:00:00,2013-02-26 00:00:00,2013-02-27 00:00:00,2013-02-28 00:00:00,2013-03-01 00:00:00,2013-03-02 00:00:00,2013-03-03 00:00:00,2013-03-04 00:00:00,2013-03-05 00:00:00,2013-03-06 00:00:00,2013-03-07 00:00:00,2013-03-08 00:00:00,2013-03-09 00:00:00,2013-03-10 00:00:00,2013-03-11 00:00:00,2013-03-12 00:00:00,2013-03-13 00:00:00,2013-03-14 00:00:00,2013-03-15 00:00:00,2013-03-16 00:00:00,2013-03-17 00:00:00,2013-03-18 00:00:00,2013-03-19 00:00:00,2013-03-20 00:00:00,2013-03-21 00:00:00,2013-03-22 00:00:00,2013-03-23 00:00:00,2013-03-24 00:00:00,2013-03-25 00:00:00,2013-03-26 00:00:00,2013-03-27 00:00:00,2013-03-28 00:00:00,2013-03-29 00:00:00,2013-03-30 00:00:00,2013-03-31 00:00:00,2013-04-01 00:00:00,2013-04-02 00:00:00,2013-04-03 00:00:00,2013-04-04 00:00:00,2013-04-05 00:00:00,2013-04-06 00:00:00,2013-04-07 00:00:00,2013-04-08 00:00:00,2013-04-09 00:00:00,2013-04-10 00:00:00,2013-04-11 00:00:00,2013-04-12 00:00:00,2013-04-13 00:00:00,2013-04-14 00:00:00,2013-04-15 00:00:00,2013-04-16 00:00:00,2013-04-17 00:00:00,2013-04-18 00:00:00,2013-04-19 00:00:00,2013-04-20 00:00:00,2013-04-21 00:00:00,2013-04-22 00:00:00,2013-04-23 00:00:00,2013-04-24 00:00:00,2013-04-25 00:00:00,2013-04-26 00:00:00,2013-04-27 00:00:00,2013-04-28 00:00:00,2013-04-29 00:00:00,2013-04-30 00:00:00,2013-05-01 00:00:00,2013-05-02 00:00:00,2013-05-03 00:00:00,2013-05-04 00:00:00,2013-05-05 00:00:00,2013-05-06 00:00:00,2013-05-07 00:00:00,2013-05-08 00:00:00,2013-05-09 00:00:00,2013-05-10 00:00:00,2013-05-11 00:00:00,2013-05-12 00:00:00,2013-05-13 00:00:00,2013-05-14 00:00:00,2013-05-15 00:00:00,2013-05-16 00:00:00,2013-05-17 00:00:00,2013-05-18 00:00:00,2013-05-19 00:00:00,2013-05-20 00:00:00,2013-05-21 00:00:00,2013-05-22 00:00:00,2013-05-23 00:00:00,2013-05-24 00:00:00,2013-05-25 00:00:00,2013-05-26 00:00:00,2013-05-27 00:00:00,2013-05-28 00:00:00,2013-05-29 00:00:00,2013-05-30 00:00:00,2013-05-31 00:00:00,,
Project: 100731  BASELINE SCHEDULE B1,,,,,,Budgeted Units,0,0,0,0,0,0,0,0,0,0,0,0,0,0,0,0,0,0,0,0,0,0,0,0,0,0,0,0,0,0,0,0,0,0,0,0,0,0,0,0,0,0,0,0,0,0,0,0,0,0,0,0,0,0,0,0,0,0,0,0,0,0,0,0,0,0,0,0,0,0,0,0,0,0,0,0,0,0,0,0,0,0,0,0,0,0,0,0,0,0,0,0,0,0,0,0,0,0,0,0,0,0,0,0,0,0,0,0,0,0,0,0,0,0,0,0,0,0,0,0,0,0,0,0,0,0,0,0,0,0,0,0,0,0,0,0,0,0,0,0,0,0,0,0,0,0,0,0,0,0,0,0,0,0,0,0,0,0,0,0,0,0,0,0,0,0,0,0,0,0,0,0,0,0,0,0,0,0,0,0,0,0,0,0,0,0,0,0,0,0,0,0,0,0,0,0,0,0,0,0,0,0,0,0,0,0,0,0,0,0,0,0,0,0,0,0,0,0,0,0,0,0,0,0,0,0,0,0,0,0,0,0,0,0,0,0,0,0,0,0,0,0,0,0,0,0,0,0,0,0,0,0,0,0,0,0,0,0,0,0,0,0,0,29,0,2.5,0,0,495,0,0,0,5,0,0,495,0,0,0,5,0,0,495,0,0,0,5,0,0,495,0,0,0,0,0,0,1106,0,0,0,0,0,0,1106,0,0,0,0,1.5,0,1106,0,0,0,0,0,0,1106,0,0,0,0,0,0,674,0,0,0,0,0,0,674,0,0,0,0,0,0,674,0,0,0,0,0,0,674,0,0,0,0,0,0,2189,0,0,0,0,0,0,2189,0,0,0,0,0,0,2189,0,0,0,0,0,0,2186,0,0,0,0,0,0,1058,0,0,0,0,0,0,1058,0,0,0,0,0,0,1058,0,0,0,0,0,0,1058,0,0,0,0,0,0,1058,0,0,0,0,0,0,1767,0,0,0,0,0,0,1767,0,0,0,0,0,0,1767,0,0,0,0,0,0,1767,0,0,0,3,0,0,1767,0,0,0,0,0,0,0,2255,0,0,0,0,0,0,1651,0,0,0,0,0,0,2080,0,0,0,0,0,0,1912,0,0,0,0,0,0,2492,0,0,0,0,0,0,1662,0,0,0,0,0,0,2034,0,0,0,0,0,0,3479,0,0,0,0,0,0,1645,0,0,0,0,0,0,1139,0,0,0,0,0,0,2784,0,0,0,0,0,0,0,0,0,0,0,0,0,0,0,0,0,0,0,0,0,0,0,0,0,0,0,0,0,0,0,0,0,0,0,0,0,0,0,0,0,0,0,0,0,0,0,0,0,0,0,0,0,0,0,0,0,0,0,0,0,0,0,0,0,0,0,0,0,0,0,0,0,0,0,0,0,0,0,0,0,0,0,0,0,0,0,0,0,0,0,0,0,0,0,0,0,0,0,0,0,0,0,0,0,0,0,0,0,0,0,0,0,0,0,0,0,0,0,0,0,,,,,,,,,,,,,,,,,,,,,,,,,,,,,,,,,,,,,,,,,,,,,,,,,,,,,,,,,,,,,,,,,,,,,,,,,,,,,,,,,,,,,,,,,,,,,,,,,,,,,,,,,,,,,,,,,,,,,,,,,,,,,,,,,,,,,,,,,,,,,,,,,,,,,,,,,,,,,,,,,,,,,,,,,,,,,,,,,,,,,,,,,,,,,,,,,,,,,,,,,,,,,,,,,,,,,,,,,,,,,,,,,,,,,,,,,,,,,,,,,,,,,,,,,,,,,,,,,,,,,,,,,,,,,,,,,,,,,,,,,,,,,,,,,,,,,,,,,,,,,,,,,,,,,,,,,,,,,,,,,,,,,,,,,,,,,,,,,,,,,,,,,,,,,,,,,,,,,,,,,,,,,,,,,,,,,,,,,,,,,,,,,,,,,,,,,,,,,,,,,,,,,,,,,,,,,,,,,,,,,,,,,,,,,,,,,,,,,,,,,,,,,,,,,,,,,,,,,,,,,,,,,,,,,,,,,,,,,,,,,,,,,,,,,,,,,,,,,,,,,,,,,,,,,,,,,,,,,,,,,,,,,,,,,,,,,,,,,,,,,,,,,,,,,,,,,,,,,,,,,,,,,,,,,,,,,,,,,,,,,,,,,,,,,,,,,,,,,,,,,,,,,,,,,,,,,,,,,,,,,,,,,,,,,,,,,,,,,,,,,,,,,,,,,,,,,,,,,,,,,,,,,,,,,,,,,,,,,,,,,,,,,,,,,,,,,,,,,,,,,,,,,,,,,,,,,,,,,,,,,,,,,,,,,,,,,,,,,,,,,,,,,,,,,,
Project: 100731  BASELINE SCHEDULE B1,,,,,,Cum Budgeted Units,0,0,0,0,0,0,0,0,0,0,0,0,0,0,0,0,0,0,0,0,0,0,0,0,0,0,0,0,0,0,0,0,0,0,0,0,0,0,0,0,0,0,0,0,0,0,0,0,0,0,0,0,0,0,0,0,0,0,0,0,0,0,0,0,0,0,0,0,0,0,0,0,0,0,0,0,0,0,0,0,0,0,0,0,0,0,0,0,0,0,0,0,0,0,0,0,0,0,0,0,0,0,0,0,0,0,0,0,0,0,0,0,0,0,0,0,0,0,0,0,0,0,0,0,0,0,0,0,0,0,0,0,0,0,0,0,0,0,0,0,0,0,0,0,0,0,0,0,0,0,0,0,0,0,0,0,0,0,0,0,0,0,0,0,0,0,0,0,0,0,0,0,0,0,0,0,0,0,0,0,0,0,0,0,0,0,0,0,0,0,0,0,0,0,0,0,0,0,0,0,0,0,0,0,0,0,0,0,0,0,0,0,0,0,0,0,0,0,0,0,0,0,0,0,0,0,0,0,0,0,0,0,0,0,0,0,0,0,0,0,0,0,0,0,0,0,0,0,0,0,0,0,0,0,0,0,0,0,0,0,0,0,0,29,29,31.5,31.5,31.5,526.5,526.5,526.5,526.5,531.5,531.5,531.5,1026.5,1026.5,1026.5,1026.5,1031.5,1031.5,1031.5,1526.5,1526.5,1526.5,1526.5,1531.5,1531.5,1531.5,2026.5,2026.5,2026.5,2026.5,2026.5,2026.5,2026.5,3132.5,3132.5,3132.5,3132.5,3132.5,3132.5,3132.5,4238.5,4238.5,4238.5,4238.5,4238.5,4240,4240,5346,5346,5346,5346,5346,5346,5346,6452,6452,6452,6452,6452,6452,6452,7126,7126,7126,7126,7126,7126,7126,7800,7800,7800,7800,7800,7800,7800,8474,8474,8474,8474,8474,8474,8474,9148,9148,9148,9148,9148,9148,9148,11337,11337,11337,11337,11337,11337,11337,13526,13526,13526,13526,13526,13526,13526,15715,15715,15715,15715,15715,15715,15715,17901,17901,17901,17901,17901,17901,17901,18959,18959,18959,18959,18959,18959,18959,20017,20017,20017,20017,20017,20017,20017,21075,21075,21075,21075,21075,21075,21075,22133,22133,22133,22133,22133,22133,22133,23191,23191,23191,23191,23191,23191,23191,24958,24958,24958,24958,24958,24958,24958,26725,26725,26725,26725,26725,26725,26725,28492,28492,28492,28492,28492,28492,28492,30259,30259,30259,30259,30262,30262,30262,32029,32029,32029,32029,32029,32029,32029,32029,34284,34284,34284,34284,34284,34284,34284,35935,35935,35935,35935,35935,35935,35935,38015,38015,38015,38015,38015,38015,38015,39927,39927,39927,39927,39927,39927,39927,42419,42419,42419,42419,42419,42419,42419,44081,44081,44081,44081,44081,44081,44081,46115,46115,46115,46115,46115,46115,46115,49594,49594,49594,49594,49594,49594,49594,51239,51239,51239,51239,51239,51239,51239,52378,52378,52378,52378,52378,52378,52378,55162,55162,55162,55162,55162,55162,55162,55162,55162,55162,55162,55162,55162,55162,55162,55162,55162,55162,55162,55162,55162,55162,55162,55162,55162,55162,55162,55162,55162,55162,55162,55162,55162,55162,55162,55162,55162,55162,55162,55162,55162,55162,55162,55162,55162,55162,55162,55162,55162,55162,55162,55162,55162,55162,55162,55162,55162,55162,55162,55162,55162,55162,55162,55162,55162,55162,55162,55162,55162,55162,55162,55162,55162,55162,55162,55162,55162,55162,55162,55162,55162,55162,55162,55162,55162,55162,55162,55162,55162,55162,55162,55162,55162,55162,55162,55162,55162,55162,55162,55162,55162,55162,55162,55162,55162,55162,55162,55162,55162,55162,55162,55162,55162,55162,55162,55162,55162,55162,55162,55162,55162,55162,,,,,,,,,,,,,,,,,,,,,,,,,,,,,,,,,,,,,,,,,,,,,,,,,,,,,,,,,,,,,,,,,,,,,,,,,,,,,,,,,,,,,,,,,,,,,,,,,,,,,,,,,,,,,,,,,,,,,,,,,,,,,,,,,,,,,,,,,,,,,,,,,,,,,,,,,,,,,,,,,,,,,,,,,,,,,,,,,,,,,,,,,,,,,,,,,,,,,,,,,,,,,,,,,,,,,,,,,,,,,,,,,,,,,,,,,,,,,,,,,,,,,,,,,,,,,,,,,,,,,,,,,,,,,,,,,,,,,,,,,,,,,,,,,,,,,,,,,,,,,,,,,,,,,,,,,,,,,,,,,,,,,,,,,,,,,,,,,,,,,,,,,,,,,,,,,,,,,,,,,,,,,,,,,,,,,,,,,,,,,,,,,,,,,,,,,,,,,,,,,,,,,,,,,,,,,,,,,,,,,,,,,,,,,,,,,,,,,,,,,,,,,,,,,,,,,,,,,,,,,,,,,,,,,,,,,,,,,,,,,,,,,,,,,,,,,,,,,,,,,,,,,,,,,,,,,,,,,,,,,,,,,,,,,,,,,,,,,,,,,,,,,,,,,,,,,,,,,,,,,,,,,,,,,,,,,,,,,,,,,,,,,,,,,,,,,,,,,,,,,,,,,,,,,,,,,,,,,,,,,,,,,,,,,,,,,,,,,,,,,,,,,,,,,,,,,,,,,,,,,,,,,,,,,,,,,,,,,,,,,,,,,,,,,,,,,,,,,,,,,,,,,,,,,,,,,,,,,,,,,,,,,,,,,,,,,,,,,,,,,,,,,,,,,,
,,,,,31610,토목,,,,,,,,,,,,,,,,,,,,,,,,,,,,,,,,,,,,,,,,,,,,,,,,,,,,,,,,,,,,,,,,,,,,,,,,,,,,,,,,,,,,,,,,,,,,,,,,,,,,,,,,,,,,,,,,,,,,,,,,,,,,,,,,,,,,,,,,,,,,,,,,,,,,,,,,,,,,,,,,,,,,,,,,,,,,,,,,,,,,,,,,,,,,,,,,,,,,,,,,,,,,,,,,,,,,,,,,,,,,,,,,,,,,,,,,,,,,,,,,,,,,,,,,,,,,,,,,,,,,,,,,29,,2.5,,,495,,,,5,,,495,,,,5,,,495,,,,5,,,495,,,,,,,1106,,,,,,,1106,,,,,1.5,,1106,,,,,,,1106,,,,,,,674,,,,,,,674,,,,,,,674,,,,,,,674,,,,,,,2189,,,,,,,2189,,,,,,,2189,,,,,,,2186,,,,,,,1058,,,,,,,1058,,,,,,,1058,,,,,,,1058,,,,,,,1058,,,,,,,1767,,,,,,,1767,,,,,,,1767,,,,,,,1767,,,,3,,,1767,,,,,,,,-11369,,,,,,,795,,,,,,,1154,,,,,,,1066,,,,,,,1500,,,,,,,960,,,,,,,814,,,,,,,1477,,,,,,,838,,,,,,,908,,,,,,,1438,,,,,,,,,,,,,,,,,,,,,,,,,,,,,,,,,,,,,,,,,,,,,,,,,,,,,,,,,,,,,,,,,,,,,,,,,,,,,,,,,,,,,,,,,,,,,,,,,,,,,,,,,,,,,,,,,,,,,,,,,,,,,,,,,,,,,,,,,,,,,,,,,,,,,,,,,,,,,,,,,,,,,,,,,,,,,,,,,,,,,,,,,,,,,,,,,,,,,,,,,,,,,,,,,,,,,,,,,,,,,,,,,,,,,,,,,,,,,,,,,,,,,,,,,,,,,,,,,,,,,,,,,,,,,,,,,,,,,,,,,,,,,,,,,,,,,,,,,,,,,,,,,,,,,,,,,,,,,,,,,,,,,,,,,,,,,,,,,,,,,,,,,,,,,,,,,,,,,,,,,,,,,,,,,,,,,,,,,,,,,,,,,,,,,,,,,,,,,,,,,,,,,,,,,,,,,,,,,,,,,,,,,,,,,,,,,,,,,,,,,,,,,,,,,,,,,,,,,,,,,,,,,,,,,,,,,,,,,,,,,,,,,,,,,,,,,,,,,,,,,,,,,,,,,,,,,,,,,,,,,,,,,,,,,,,,,,,,,,,,,,,,,,,,,,,,,,,,,,,,,,,,,,,,,,,,,,,,,,,,,,,,,,,,,,,,,,,,,,,,,,,,,,,,,,,,,,,,,,,,,,,,,,,,,,,,,,,,,,,,,,,,,,,,,,,,,,,,,,,,,,,,,,,,,,,,,,,,,,,,,,,,,,,,,,,,,,,,,,,,,,,,,,,,,,,,,,,,,,,,,,,,,,,,,,,,,,,,,,,,,,,,,,,,,,,,,,,,,,,,,,,,,,,,,,,,,,,,,,,,,,,,,,,,,,,,,,,,,,,,,,,,,,,,,,,,,,,,,,,,,,,,,,,,,,,,,,,,,,,,,,,,,,,,,,,,,,,,,,,,,,,,,,,,,,,
,,,,,23552,건축,,,,,,,,,,,,,,,,,,,,,,,,,,,,,,,,,,,,,,,,,,,,,,,,,,,,,,,,,,,,,,,,,,,,,,,,,,,,,,,,,,,,,,,,,,,,,,,,,,,,,,,,,,,,,,,,,,,,,,,,,,,,,,,,,,,,,,,,,,,,,,,,,,,,,,,,,,,,,,,,,,,,,,,,,,,,,,,,,,,,,,,,,,,,,,,,,,,,,,,,,,,,,,,,,,,,,,,,,,,,,,,,,,,,,,,,,,,,,,,,,,,,,,,,,,,,,,,,,,,,,,,,,,,,,,,,,,,,,,,,,,,,,,,,,,,,,,,,,,,,,,,,,,,,,,,,,,,,,,,,,,,,,,,,,,,,,,,,,,,,,,,,,,,,,,,,,,,,,,,,,,,,,,,,,,,,,,,,,,,,,,,,,,,,,,,,,,,,,,,,,,,,,,,,,,,,,,,,,,,,,,,,,,,,,,,,,,,,,,,,,,,,,,,,,,,,13624,,,,,,,856,,,,,,,926,,,,,,,846,,,,,,,992,,,,,,,702,,,,,,,1220,,,,,,,2002,,,,,,,807,,,,,,,231,,,,,,,1346,,,,,,,,,,,,,,,,,,,,,,,,,,,,,,,,,,,,,,,,,,,,,,,,,,,,,,,,,,,,,,,,,,,,,,,,,,,,,,,,,,,,,,,,,,,,,,,,,,,,,,,,,,,,,,,,,,,,,,,,,,,,,,,,,,,,,,,,,,,,,,,,,,,,,,,,,,,,,,,,,,,,,,,,,,,,,,,,,,,,,,,,,,,,,,,,,,,,,,,,,,,,,,,,,,,,,,,,,,,,,,,,,,,,,,,,,,,,,,,,,,,,,,,,,,,,,,,,,,,,,,,,,,,,,,,,,,,,,,,,,,,,,,,,,,,,,,,,,,,,,,,,,,,,,,,,,,,,,,,,,,,,,,,,,,,,,,,,,,,,,,,,,,,,,,,,,,,,,,,,,,,,,,,,,,,,,,,,,,,,,,,,,,,,,,,,,,,,,,,,,,,,,,,,,,,,,,,,,,,,,,,,,,,,,,,,,,,,,,,,,,,,,,,,,,,,,,,,,,,,,,,,,,,,,,,,,,,,,,,,,,,,,,,,,,,,,,,,,,,,,,,,,,,,,,,,,,,,,,,,,,,,,,,,,,,,,,,,,,,,,,,,,,,,,,,,,,,,,,,,,,,,,,,,,,,,,,,,,,,,,,,,,,,,,,,,,,,,,,,,,,,,,,,,,,,,,,,,,,,,,,,,,,,,,,,,,,,,,,,,,,,,,,,,,,,,,,,,,,,,,,,,,,,,,,,,,,,,,,,,,,,,,,,,,,,,,,,,,,,,,,,,,,,,,,,,,,,,,,,,,,,,,,,,,,,,,,,,,,,,,,,,,,,,,,,,,,,,,,,,,,,,,,,,,,,,,,,,,,,,,,,,,,,,,,,,,,,,,,,,,,,,,,,,,,,,,,,,,,,,,,,,,,,,,,,,,,,,,,,,,,,,,,,,,,,,,,,,,,,,,,,,,,,,,,,
,,,,,55162,,,,,,,,,,,,,,,,,,,,,,,,,,,,,,,,,,,,,,,,,,,,,,,,,,,,,,,,,,,,,,,,,,,,,,,,,,,,,,,,,,,,,,,,,,,,,,,,,,,,,,,,,,,,,,,,,,,,,,,,,,,,,,,,,,,,,,,,,,,,,,,,,,,,,,,,,,,,,,,,,,,,,,,,,,,,,,,,,,,,,,,,,,,,,,,,,,,,,,,,,,,,,,,,,,,,,,,,,,,,,,,,,,,,,,,,,,,,,,,,,,,,,,,,,,,,,,,,,,,,,,,,,,,,,,,,,,,,,,,,,,,,,,,,,,,,,,,,,,,,,,,,,,,,,,,,,,,,,,,,,,,,,,,,,,,,,,,,,,,,,,,,,,,,,,,,,,,,,,,,,,,,,,,,,,,,,,,,,,,,,,,,,,,,,,,,,,,,,,,,,,,,,,,,,,,,,,,,,,,,,,,,,,,,,,,,,,,,,,,,,,,,,,,,,,,,,,,,,,,,,,,,,,,,,,,,,,,,,,,,,,,,,,,,,,,,,,,,,,,,,,,,,,,,,,,,,,,,,,,,,,,,,,,,,,,,,,,,,,,,,,,,,,,,,,,,,,,,,,,,,,,,,,,,,,,,,,,,,,,,,,,,,,,,,,,,,,,,,,,,,,,,,,,,,,,,,,,,,,,,,,,,,,,,,,,,,,,,,,,,,,,,,,,,,,,,,,,,,,,,,,,,,,,,,,,,,,,,,,,,,,,,,,,,,,,,,,,,,,,,,,,,,,,,,,,,,,,,,,,,,,,,,,,,,,,,,,,,,,,,,,,,,,,,,,,,,,,,,,,,,,,,,,,,,,,,,,,,,,,,,,,,,,,,,,,,,,,,,,,,,,,,,,,,,,,,,,,,,,,,,,,,,,,,,,,,,,,,,,,,,,,,,,,,,,,,,,,,,,,,,,,,,,,,,,,,,,,,,,,,,,,,,,,,,,,,,,,,,,,,,,,,,,,,,,,,,,,,,,,,,,,,,,,,,,,,,,,,,,,,,,,,,,,,,,,,,,,,,,,,,,,,,,,,,,,,,,,,,,,,,,,,,,,,,,,,,,,,,,,,,,,,,,,,,,,,,,,,,,,,,,,,,,,,,,,,,,,,,,,,,,,,,,,,,,,,,,,,,,,,,,,,,,,,,,,,,,,,,,,,,,,,,,,,,,,,,,,,,,,,,,,,,,,,,,,,,,,,,,,,,,,,,,,,,,,,,,,,,,,,,,,,,,,,,,,,,,,,,,,,,,,,,,,,,,,,,,,,,,,,,,,,,,,,,,,,,,,,,,,,,,,,,,,,,,,,,,,,,,,,,,,,,,,,,,,,,,,,,,,,,,,,,,,,,,,,,,,,,,,,,,,,,,,,,,,,,,,,,,,,,,,,,,,,,,,,,,,,,,,,,,,,,,,,,,,,,,,,,,,,,,,,,,,,,,,,,,,,,,,,,,,,,,,,,,,,,,,,,,,,,,,,,,,,,,,,,,,,,,,,,,,,,,,,,,,,,,
